# 臻道容妍

Schedule from MS Project, 2017-05-18 to 2017-06-21.

## Calendars

- 标准: Mon-Fri 08:00-12:00, 13:00-17:00; Sat-Sun off. Exceptions (off unless hours are given): 2017-05-20 08:00-12:00, 13:00-17:00, 2017-05-27 08:00-12:00, 13:00-17:00, 2017-06-03 08:00-12:00, 13:00-17:00.

## Resources

| Resource |
| --- |
| 缪靖伟 |
| 包川 |
| 黄乾车轮 |
| 黄乾轮 |
| 张帆 |
| 张家奇 |
| 李文强 |
| 宋瑶 |
| 周欣 |
| 鲜坤潮 |
| 冉彬 |
| 杨绍平 |
| 余中正 |
| 王志鑫 |
| 黄俊成 |
| 凌小松 |
| 莫杭 |

## Schedule

| ID | WBS | Task | Duration | Start | Finish | Predecessors | Total slack | Free slack | Constraint | Resources | Work |
| --- | --- | --- | --- | --- | --- | --- | --- | --- | --- | --- | --- |
| 1 | 1 | **菲律宾直播** | 28d | 2017-05-18 | 2017-06-21 |  |  |  |  |  | 752h |
| 2 | 1.1 | app接口文档 | 1d | 2017-05-20 | 2017-05-20 |  | 11d | 0d | finish no earlier than 2017-05-20 | 杨绍平 | 8h |
| 3 | 1.2 | 数据库设计 | 1d | 2017-05-22 | 2017-05-22 | 2 | 11d | 0d | finish no earlier than 2017-05-22 | 杨绍平 | 8h |
| 4 | 1.3 | 接口开发 | 3d | 2017-05-23 | 2017-05-25 | 3 | 11d | 5d | finish no earlier than 2017-05-25 | 杨绍平 | 24h |
| 5 | 1.4 | **后台开发** | 10d | 2017-06-01 | 2017-06-13 | 4 |  |  |  |  | 80h |
| 6 | 1.4.1 | 用户管理 | 2d | 2017-06-01 | 2017-06-02 |  | 6d | 0d | start no earlier than 2017-06-01 | 杨绍平 | 16h |
| 7 | 1.4.2 | 首页banner、认证申请 | 1d | 2017-06-03 | 2017-06-03 | 6 | 6d | 0d | start no earlier than 2017-06-03 | 杨绍平 | 8h |
| 8 | 1.4.3 | 直播管理 | 2d | 2017-06-05 | 2017-06-06 | 7 | 6d | 0d | start no earlier than 2017-06-05 | 杨绍平 | 16h |
| 9 | 1.4.4 | 礼物管理、推送 | 1d | 2017-06-07 | 2017-06-07 | 8 | 6d | 0d | finish no earlier than 2017-06-07 | 杨绍平 | 8h |
| 10 | 1.4.5 | 运营管理 | 2d | 2017-06-08 | 2017-06-09 | 9 | 6d | 0d | finish no earlier than 2017-06-09 | 杨绍平 | 16h |
| 11 | 1.4.6 | 统计分析、管理员配置 | 2d? | 2017-06-12 | 2017-06-13 | 10 | 6d |  | start no earlier than 2017-06-12 | 杨绍平 | 16h |
| 12 | 1.5 | **Android开发** | 28d? | 2017-05-18 | 2017-06-21 |  | 0d |  |  |  | 224h |
| 13 | 1.5.1 | 登陆、注册、忘记密码页面 | 1d | 2017-05-18 | 2017-05-18 |  | 0d |  | start no earlier than 2016-10-11 | 王志鑫 | 8h |
| 14 | 1.5.2 | 首页页面 | 1d | 2017-05-19 | 2017-05-19 | 13 | 0d |  | finish no earlier than 2016-10-17 | 王志鑫 | 8h |
| 15 | 1.5.3 | 直播模块页面 | 2d | 2017-05-20 | 2017-05-22 | 14 | 0d |  | start no earlier than 2016-10-18 | 王志鑫 | 16h |
| 16 | 1.5.4 | 预告模块页面 | 1d? | 2017-05-23 | 2017-05-23 | 15 | 0d |  |  | 王志鑫 | 8h |
| 17 | 1.5.5 | 历史模块页面 | 1d? | 2017-05-24 | 2017-05-24 | 16 | 0d |  | start no earlier than 2016-10-22 | 王志鑫 | 8h |
| 18 | 1.5.6 | 关注页面 | 2d? | 2017-05-25 | 2017-05-26 | 17 | 0d |  | finish no earlier than 2016-10-25 | 王志鑫 | 16h |
| 19 | 1.5.7 | ‘我的’主界面页面 | 1d? | 2017-05-27 | 2017-05-27 | 18 | 0d |  |  | 王志鑫 | 8h |
| 20 | 1.5.8 | 个人资料、直播记录、等级、收益、账号界面 | 2d | 2017-05-29 | 2017-05-30 | 19 | 0d |  |  | 王志鑫 | 16h |
| 21 | 1.5.9 | 实名认证、我的动态、金豆贡献榜页面 | 1d? | 2017-05-31 | 2017-05-31 | 20 | 0d |  |  | 王志鑫 | 8h |
| 22 | 1.5.10 | 直播购买记录、设置页面 | 1d? | 2017-06-01 | 2017-06-01 | 21 | 0d |  |  | 王志鑫 | 8h |
| 23 | 1.5.11 | 登陆、注册、忘记密码接口接入 | 1d? | 2017-06-02 | 2017-06-02 | 22 | 0d |  |  | 王志鑫 | 8h |
| 24 | 1.5.12 | 首页接口接入 | 1d? | 2017-06-03 | 2017-06-03 | 23 | 0d |  |  | 王志鑫 | 8h |
| 25 | 1.5.13 | 直播模块接口接入 | 2d | 2017-06-05 | 2017-06-06 | 24 | 0d |  |  | 王志鑫 | 16h |
| 26 | 1.5.14 | 预告模块接口接入 | 2d | 2017-06-07 | 2017-06-08 | 25 | 0d |  |  | 王志鑫 | 16h |
| 27 | 1.5.15 | 历史模块接口接入 | 1d? | 2017-06-09 | 2017-06-09 | 26 | 0d |  |  | 王志鑫 | 8h |
| 28 | 1.5.16 | 关注接口接入 | 1d? | 2017-06-12 | 2017-06-12 | 27 | 0d |  |  | 王志鑫 | 8h |
| 29 | 1.5.17 | ‘我的’主界面接口接入 | 1d? | 2017-06-13 | 2017-06-13 | 28 | 0d |  |  | 王志鑫 | 8h |
| 30 | 1.5.18 | 个人资料、直播记录、等级、收益、账号接口接入 | 2d | 2017-06-14 | 2017-06-15 | 29 | 0d |  |  | 王志鑫 | 16h |
| 31 | 1.5.19 | 实名认证、我的动态、金豆贡献榜接口接入 | 2d | 2017-06-16 | 2017-06-19 | 30 | 0d |  |  | 王志鑫 | 16h |
| 32 | 1.5.20 | 直播购买记录、设置接口接入 | 2d | 2017-06-20 | 2017-06-21 | 31 | 0d |  |  | 王志鑫 | 16h |

| ID | WBS | Task | Type | Duration | Start | Finish | Predecessors | Total slack | Free slack | Constraint | Resources | Work |
| --- | --- | --- | --- | --- | --- | --- | --- | --- | --- | --- | --- | --- |
| 33 | 1.6 | **ios开发** |  | 20d? | 2017-05-18 | 2017-06-09 |  | 8d |  |  |  | 280h |
| 34 | 1.6.1 | 登陆、注册、忘记密码页面 |  | 1d | 2017-05-18 | 2017-05-18 |  | 12d | 0d | start no earlier than 2016-10-28 | 余中正 | 8h |
| 35 | 1.6.2 | 首页页面 |  | 1d | 2017-05-19 | 2017-05-19 | 34 | 12d | 0d |  | 余中正 | 8h |
| 36 | 1.6.3 | 直播模块页面 |  | 2d | 2017-05-20 | 2017-05-22 | 35 | 12d | 0d |  | 余中正 | 16h |
| 37 | 1.6.4 | 预告模块页面 |  | 1d | 2017-05-23 | 2017-05-23 | 36 | 12d | 0d | start no earlier than 2016-11-02 | 余中正 | 8h |
| 38 | 1.6.5 | 历史模块页面 |  | 1d | 2017-05-24 | 2017-05-24 | 37 | 12d | 0d |  | 余中正 | 8h |
| 39 | 1.6.6 | 关注页面 |  | 1d | 2017-05-18 | 2017-05-18 |  | 21d | 0d | start no earlier than 2016-10-31 | 莫杭 | 8h |
| 40 | 1.6.7 | ‘我的’主界面页面 |  | 1d | 2017-05-19 | 2017-05-19 | 39 | 21d | 0d |  | 莫杭 | 8h |
| 41 | 1.6.8 | 个人资料、直播记录、等级、收益、账号界面 |  | 2d | 2017-05-20 | 2017-05-22 | 40 | 21d | 0d |  | 莫杭 | 16h |
| 42 | 1.6.9 | 实名认证、我的动态、金豆贡献榜页面 |  | 1d | 2017-05-23 | 2017-05-23 | 41 | 21d | 0d |  | 莫杭 | 8h |
| 43 | 1.6.10 | 直播购买记录、设置页面 |  | 2d? | 2017-05-24 | 2017-05-25 | 42 | 21d |  |  | 莫杭 | 16h |
| 44 | 1.6.11 | 登陆、注册、忘记密码接口接入 |  | 2d? | 2017-05-25 | 2017-05-26 | 38 | 12d | 0d |  | 余中正 | 16h |
| 45 | 1.6.12 | 首页接口接入 | manual | 4d | 2017-05-27 | 2017-05-31 | 44 |  |  | start no earlier than 2017-05-27 | 余中正 | 32h |
| 46 | 1.6.13 | 直播模块接口接入 |  | 2d | 2017-06-01 | 2017-06-02 | 45 | 12d | 0d |  | 余中正 | 16h |
| 47 | 1.6.14 | 预告模块接口接入 |  | 1d | 2017-06-03 | 2017-06-03 | 46 | 12d | 0d | start no earlier than 2017-06-03 | 余中正 | 8h |
| 48 | 1.6.15 | 历史模块接口接入 |  | 1d | 2017-06-05 | 2017-06-05 | 47 | 12d |  |  | 余中正 | 8h |
| 49 | 1.6.16 | 关注接口接入 |  | 4d? | 2017-05-27 | 2017-05-31 |  | 8d | 0d | finish no earlier than 2017-05-31 | 莫杭 | 32h |
| 50 | 1.6.17 | ‘我的’主界面接口接入 |  | 2d? | 2017-06-01 | 2017-06-02 | 49 | 8d | 0d |  | 莫杭 | 16h |
| 51 | 1.6.18 | 个人资料、直播记录、等级、收益、账号接口接入 |  | 2d | 2017-06-03 | 2017-06-05 | 50 | 8d | 0d |  | 莫杭 | 16h |
| 52 | 1.6.19 | 实名认证、我的动态、金豆贡献榜接口接入 |  | 2d | 2017-06-06 | 2017-06-07 | 51 | 8d | 0d |  | 莫杭 | 16h |
| 53 | 1.6.20 | 直播购买记录、设置接口接入 |  | 2d | 2017-06-08 | 2017-06-09 | 52 | 8d |  |  | 莫杭 | 16h |
| 54 | 1.7 | 后台集成测试 |  | 1d | 2017-06-14 | 2017-06-14 |  | 5d |  | finish no earlier than 2017-06-14 | 杨绍平 | 8h |
| 59 | 1.8 | app集成测试 |  | 3d | 2017-06-12 | 2017-06-14 |  | 13d | 0d | start no earlier than 2017-06-12 | 余中正; 王志鑫; 莫杭 | 72h |
| 60 | 1.9 | 系统测试 |  | 3d? | 2017-06-15 | 2017-06-19 | 59 | 13d |  | start no earlier than 2016-11-09 | 黄俊成; 凌小松 | 48h |
